# Stargazer

Schedule from MS Project, 2010-01-06 to 2010-04-26, 4 hours a day, A marks actual dates.
Okanagan College

## Calendars

- Standard: Mon 14:00-16:30; Tue off; Wed 14:30-16:30; Thu 14:30-18:30; Fri-Sun off. Exceptions (off unless hours are given): 2010-04-06 08:00-12:00, 13:00-17:00, 2010-04-20 08:00-12:00, 13:00-17:00.

## Resources

| Resource |
| --- |
| Robert |
| Rob |

## Schedule

| ID | WBS | Task | Type | Duration | Start | Finish | Predecessors | Complete | Constraint | Resources | Work | Actual work | Text1 |
| --- | --- | --- | --- | --- | --- | --- | --- | --- | --- | --- | --- | --- | --- |
| 1 | 1 | **Iteration 5: Automated Scheduling and Telescope Positioning: (Total 105 units)** |  | 9d | 2010-01-06 14:30 A | 2010-02-04 08:00 A |  | 100% |  |  | 31.25h | 31.25h | 16 |
| 2 | 1.1 | **Business Modelling: (Total 1 unit)** |  | 0.06d | 2010-01-06 14:30 A | 2010-01-06 14:45 A |  | 100% |  |  | 0.25h | 0.25h | 16 |
| 3 | 1.1.1 | Update vision |  | 15min | 2010-01-06 14:30 A | 2010-01-06 14:45 A |  | 100% |  | Rob | 0.25h | 0.25h |  |
| 4 | 1.2 | **Implementation: (Total 53 units)** |  | 4.62d | 2010-01-06 14:30 A | 2010-01-20 16:00 A |  | 100% |  |  | 13.25h | 13.25h | 16 |
| 5 | 1.2.1 | **Web system** |  | 4.62d | 2010-01-06 14:30 A | 2010-01-20 16:00 A |  | 100% |  |  | 10.25h | 10.25h | 16 |
| 6 | 1.2.1.1 | Add new online help documentation to website |  | 3h | 2010-01-11 14:00 A | 2010-01-13 15:00 A |  | 100% | start no earlier than 2010-01-11 08:00 | Robert | 3h | 3h | 12 |
| 7 | 1.2.1.2 | Fix CSS with mobile devices |  | 15min | 2010-01-07 14:30 A | 2010-01-07 14:45 A |  | 100% | start no earlier than 2010-01-07 08:00 | Rob | 0.25h | 0.25h |  |
| 8 | 1.2.1.3 | Minor refactoring |  | 1.5h | 2010-01-07 14:30 A | 2010-01-07 16:00 A |  | 100% | start no earlier than 2010-01-07 08:00 | Rob | 1.5h | 1.5h |  |
| 9 | 1.2.1.4 | Download and install Oracle 10g XE on telescope server |  | 1.5h | 2010-01-14 14:30 A | 2010-01-14 16:00 A |  | 100% | start no earlier than 2010-01-14 08:00 | Rob | 1.5h | 1.5h |  |
| 10 | 1.2.1.5 | Install Oracle client on web server |  | 1h | 2010-01-06 14:30 A | 2010-01-06 15:30 A |  | 100% |  | Rob | 1h | 1h |  |
| 11 | 1.2.1.6 | Configure Rails environment to now use the Oracle 10g XE database |  | 1h | 2010-01-14 16:00 A | 2010-01-14 17:00 A | 9 | 100% | start no earlier than 2010-01-14 08:00 | Rob | 1h | 1h |  |
| 12 | 1.2.1.7 | Create triggers/batch file to run application |  | 2h | 2010-01-18 16:00 A | 2010-01-20 16:00 A |  | 100% |  | Rob | 2h | 2h |  |
| 13 | 1.2.2 | **Telescope-controlling application** |  | 0.75d | 2010-01-14 14:30 A | 2010-01-14 17:30 A |  | 100% |  |  | 3h | 3h | 16 |
| 14 | 1.2.2.1 | Allow for parking the telescope |  | 1h | 2010-01-14 14:30 A | 2010-01-14 15:30 A |  | 100% | start no earlier than 2010-01-14 08:00 | Robert | 1h | 1h |  |
| 15 | 1.2.2.2 | Allow for telescope movement ability from entered celestial coordinates |  | 2h | 2010-01-14 15:30 A | 2010-01-14 17:30 A | 14 | 100% | start no earlier than 2010-01-14 08:00 | Robert | 2h | 2h |  |
| 16 | 1.3 | **Testing: (Total 16 units)** |  | 4.12d | 2010-01-06 14:30 A | 2010-01-18 16:00 A |  | 100% |  |  | 4h | 4h | 16 |
| 17 | 1.3.1 | Test connections and scheduling jobs |  | 2h | 2010-01-18 14:00 A | 2010-01-18 16:00 A | 11 | 100% | start no earlier than 2010-01-18 08:00 | Rob | 2h | 2h |  |
| 18 | 1.3.2 | Test driver for all commands |  | 2h | 2010-01-06 14:30 A | 2010-01-06 16:30 A |  | 100% |  | Robert | 2h | 2h |  |
| 19 | 1.4 | **Analysis and Design: (Total 34 units)** |  | 2d | 2010-01-06 14:30 A | 2010-01-11 16:00 A |  | 100% |  |  | 13.5h | 13.5h | 16 |
| 20 | 1.4.1 | Research Rails plugin to handle scheduling |  | 2h | 2010-01-11 14:00 A | 2010-01-11 16:00 A |  | 100% | start no earlier than 2010-01-11 08:00 | Rob | 2h | 2h |  |
| 21 | 1.4.2 | Documentation updates |  | 5h | 2010-01-06 14:30 A | 2010-01-07 17:30 A |  | 100% |  | Rob; Robert | 10h | 10h | 20 |
| 22 | 1.4.3 | Metrics gathering |  | 1.5h | 2010-01-06 14:30 A | 2010-01-06 16:00 A |  | 100% |  | Rob | 1.5h | 1.5h |  |
| 23 | 1.5 | **Deployment: (Total 1 unit)** |  | 0.06d | 2010-02-02 08:00 A | 2010-02-03 14:45 A |  | 100% |  |  | 0.25h | 0.25h | 16 |
| 24 | 1.5.1 | Deploy in production environment |  | 15min | 2010-02-02 08:00 A | 2010-02-03 14:45 A |  | 100% |  | Rob | 0.25h | 0.25h |  |
| 25 | 1.6 | Release #5: Automated Scheduling and Telescope Positioning | milestone | 0d | 2010-02-04 08:00 A | 2010-02-04 08:00 A | 5, 13, 19 | 100% | start no earlier than 2010-02-04 08:00 | Rob; Robert |  |  |  |

| ID | WBS | Task | Type | Duration | Start | Finish | Predecessors | Complete | Remaining | Total slack | Constraint | Resources | Work | Actual work | Text1 |
| --- | --- | --- | --- | --- | --- | --- | --- | --- | --- | --- | --- | --- | --- | --- | --- |
| 27 | 2 | **Iteration 6: Libraries and GUI Enhancements: (Total 130 units)** |  | 7d | 2010-02-04 14:30 A | 2010-02-25 17:00 A | 1 | 100% |  |  |  |  | 44.5h | 44.5h | 16 |
| 28 | 2.1 | **Implementation: (Total: 97 units)** |  | 7d | 2010-02-04 14:30 A | 2010-02-25 17:00 A |  | 100% |  |  |  |  | 30.25h | 30.25h | 74 |
| 29 | 2.1.1 | **Web system** |  | 7d | 2010-02-04 14:30 A | 2010-02-25 17:00 A |  | 100% |  |  |  |  | 29.25h | 29.25h | 16 |
| 30 | 2.1.1.1 | Integrate libraries (which have celestial objects of interest) to web site |  | 6h | 2010-02-04 14:30 A | 2010-02-08 16:00 A |  | 100% |  |  |  | Robert; Rob | 12h | 12h | 24 |
| 31 | 2.1.1.2 | Add scheduled job for parking telescope |  | 5h | 2010-02-22 16:00 A | 2010-02-25 17:00 A | 30, 14 | 100% |  |  | finish no earlier than 2010-02-25 17:00 | Rob | 5h | 5h | 20 |
| 32 | 2.1.1.3 | Telescope parking completed | milestone | 0d | 2010-02-25 17:00 A | 2010-02-25 17:00 A | 31 | 100% |  |  | start no earlier than 2010-03-01 08:00 | Rob; Robert |  |  |  |
| 33 | 2.1.1.4 | Add pagination to tables (e.g. schedule log table) |  | 1.5h | 2010-02-11 17:00 A | 2010-02-11 18:30 A |  | 100% |  |  |  | Rob | 1.5h | 1.5h |  |
| 34 | 2.1.1.5 | Bug fixing and refactoring |  | 3h | 2010-02-15 14:00 A | 2010-02-17 15:00 A | 33 | 100% |  |  |  | Rob | 3h | 3h | 12 |
| 35 | 2.1.1.6 | Schedule duration validations |  | 4h | 2010-02-17 15:00 A | 2010-02-18 17:00 A | 34 | 100% |  |  |  | Rob | 4h | 4h | 16 |
| 36 | 2.1.1.7 | Search forms to schedule index and user index |  | 1.5h | 2010-02-18 17:00 A | 2010-02-18 18:30 A | 35 | 100% |  |  |  | Rob | 1.5h | 1.5h |  |
| 37 | 2.1.1.8 | Add calendars to the schedule index and form |  | 1.5h | 2010-02-22 14:00 A | 2010-02-22 15:30 A | 36 | 100% |  |  |  | Rob | 1.5h | 1.5h |  |
| 38 | 2.1.1.9 | Online help enhancements |  | 45min | 2010-02-22 15:30 A | 2010-02-22 16:15 A | 37 | 100% |  |  |  | Rob | 0.75h | 0.75h |  |
| 39 | 2.1.2 | **Telescope-controlling application** |  | 0.25d | 2010-02-04 14:30 A | 2010-02-04 15:30 A |  | 100% |  |  |  |  | 1h | 1h | 16 |
| 40 | 2.1.2.1 | Add celestial object inputs into the application |  | 1h | 2010-02-04 14:30 A | 2010-02-04 15:30 A |  | 100% |  |  |  | Robert | 1h | 1h |  |
| 41 | 2.2 | **Analysis and Design: (Total 32 units)** |  | 6.38d | 2010-02-04 14:30 A | 2010-02-24 16:30 A |  | 100% |  |  |  |  | 14h | 14h | 32 |
| 42 | 2.2.1 | Update documentation |  | 6h | 2010-02-04 14:30 A | 2010-02-08 16:00 A | 25 | 100% |  |  |  | Rob; Robert | 12h | 12h | 24 |
| 43 | 2.2.2 | Web application metrics gathering |  | 2h | 2010-02-24 14:30 A | 2010-02-24 16:30 A | 22 | 100% |  |  | start no earlier than 2010-02-24 08:00 | Rob | 2h | 2h |  |
| 44 | 2.3 | **Deployment: (Total 1 unit)** |  | 0.06d | 2010-02-25 08:00 A | 2010-02-25 14:45 A |  | 100% |  |  |  |  | 0.25h | 0.25h | 16 |
| 45 | 2.3.1 | Deploy in production environment |  | 15min | 2010-02-25 08:00 A | 2010-02-25 14:45 A |  | 100% |  |  |  | Rob | 0.25h | 0.25h |  |
| 46 | 2.4 | Release #6: Libraries and GUI Enhancements | milestone | 0d | 2010-02-25 08:00 A | 2010-02-25 08:00 A | 29, 39 | 100% |  |  | start no earlier than 2010-03-01 08:00 | Rob; Robert |  |  |  |
| 48 | 3 | **Iteration 7: Mobile Views: (Total: 88 units)** |  | 3.19d | 2010-03-04 08:00 A | 2010-03-15 14:15 | 27 | 95% | 0.15d | 5.06d |  |  | 21.25h | 20.25h | 16 |
| 49 | 3.1 | **Business Modelling (Total: 1 unit)** |  | 0.06d | 2010-03-13 08:00 A | 2010-03-15 14:15 A |  | 100% |  |  |  |  | 0.25h | 0.25h |  |
| 50 | 3.1.1 | Update vision to coincide with changes |  | 15min | 2010-03-13 08:00 A | 2010-03-15 14:15 A |  | 100% |  |  | start no earlier than 2010-03-12 08:00 | Rob | 0.25h | 0.25h |  |
| 51 | 3.2 | **Implementation: (Total: 42 units)** |  | 2.62d | 2010-03-04 08:00 A | 2010-03-11 16:30 A |  | 100% |  |  |  |  | 10.75h | 10.75h | 112 |
| 52 | 3.2.1 | **Web system** |  | 2.62d | 2010-03-04 08:00 A | 2010-03-11 16:30 A |  | 100% |  |  |  |  | 10.5h | 10.5h | 16 |
| 53 | 3.2.1.1 | Add validations for celestial object data types |  | 45min | 2010-03-04 08:00 A | 2010-03-04 15:15 A |  | 100% |  |  | start no earlier than 2010-03-03 08:00 | Rob | 0.75h | 0.75h |  |
| 54 | 3.2.1.2 | Add validations for coordinates (R.A. and Dec.) data types |  | 45min | 2010-03-04 08:00 A | 2010-03-04 15:15 A | 53 | 100% |  |  |  | Rob | 0.75h | 0.75h |  |
| 55 | 3.2.1.3 | Add Jruby script to toggle CSS element enabling/disabling |  | 1.5h | 2010-03-04 08:00 A | 2010-03-04 16:00 A | 54 | 100% |  |  |  | Rob | 1.5h | 1.5h |  |
| 56 | 3.2.1.4 | Add mobile device views and additional functionality |  | 4h | 2010-03-10 08:00 A | 2010-03-11 16:30 A |  | 100% |  |  | start no earlier than 2010-03-03 08:00 | Rob | 4h | 4h | 16 |
| 57 | 3.2.1.5 | Add administration section to online help |  | 1.5h | 2010-03-08 08:00 A | 2010-03-08 15:30 A |  | 100% |  |  |  | Rob | 1.5h | 1.5h |  |
| 58 | 3.2.1.6 | Refactor online help |  | 2h | 2010-03-08 08:00 A | 2010-03-08 16:00 A | 57 | 100% |  |  |  | Rob | 2h | 2h |  |

| ID | WBS | Task | Type | Duration | Start | Finish | Predecessors | Complete | Remaining | Total slack | Constraint | Resources | Work | Actual work | Text1 |
| --- | --- | --- | --- | --- | --- | --- | --- | --- | --- | --- | --- | --- | --- | --- | --- |
| 59 | 3.2.2 | **Telescope-Controlling Application** |  | 0.06d | 2010-03-11 14:30 A | 2010-03-11 14:45 A |  | 100% |  |  |  |  | 0.25h | 0.25h |  |
| 60 | 3.2.2.1 | Download and install Canon SDK |  | 15min | 2010-03-11 14:30 A | 2010-03-11 14:45 A |  | 100% |  |  | start no earlier than 2010-03-11 08:00 | Robert | 0.25h | 0.25h |  |
| 61 | 3.3 | **Testing (Total: 4 units)** |  | 1.12d | 2010-03-04 14:30 A | 2010-03-08 14:30 |  | 50% | 0.56d | 7.12d |  |  | 1h | 0.5h | 16 |
| 62 | 3.3.1 | Draft acceptance test |  | 30min | 2010-03-04 14:30 | 2010-03-04 15:00 |  |  |  | 8.12d | start no earlier than 2010-03-04 08:00 | Robert | 0.5h |  |  |
| 63 | 3.3.2 | Fix issue with testing environment |  | 30min | 2010-03-05 08:00 A | 2010-03-08 14:30 A |  | 100% |  |  |  | Rob | 0.5h | 0.5h |  |
| 64 | 3.4 | **Analysis and Design (Total: 40 units)** |  | 2.19d | 2010-03-08 14:00 A | 2010-03-15 14:15 |  | 95% | 0.12d | 5.06d |  |  | 9.25h | 8.75h | 102 |
| 65 | 3.4.1 | Add documentation to GitHub wiki |  | 4h | 2010-03-11 08:00 A | 2010-03-11 18:30 A |  | 100% |  |  | start no earlier than 2010-03-11 08:00 | Rob | 4h | 4h | 16 |
| 66 | 3.4.2 | Compile latest web application metrics |  | 30min | 2010-03-11 14:30 A | 2010-03-11 15:00 A |  | 100% |  |  |  | Rob | 0.5h | 0.5h |  |
| 67 | 3.4.3 | Create detailed plan for this iteration |  | 1h | 2010-03-11 14:30 A | 2010-03-11 15:30 A | 66 | 100% |  |  |  | Robert | 1h | 1h |  |
| 68 | 3.4.4 | Changes to developer's guide, configuration management |  | 30min | 2010-03-11 14:30 A | 2010-03-11 15:00 A | 67 | 100% |  |  |  | Rob | 0.5h | 0.5h |  |
| 69 | 3.4.5 | Create class diagram for telescope-controlling application |  | 1h | 2010-03-08 14:00 A | 2010-03-08 15:00 |  | 50% | 0.5h | 7d | start no earlier than 2010-03-08 08:00 | Robert | 1h | 0.5h |  |
| 70 | 3.4.6 | Create sequence diagrams for web application |  | 2h | 2010-03-08 14:00 A | 2010-03-08 16:00 A |  | 100% |  |  | start no earlier than 2010-03-08 08:00 | Robert | 2h | 2h |  |
| 71 | 3.4.7 | All documentation finished | milestone | 0d | 2010-03-13 08:00 A | 2010-03-13 08:00 A | 65, 66, 67, 68, 69, 70 | 100% |  |  | start no earlier than 2010-03-13 08:00 | Rob; Robert |  |  |  |
| 72 | 3.4.8 | **Deployment: (Total: 1 unit)** |  | 0.06d | 2010-03-13 08:00 A | 2010-03-15 14:15 A |  | 100% |  |  |  |  | 0.25h | 0.25h | 16 |
| 73 | 3.4.8.1 | Deploy latest versions of web application to production |  | 15min | 2010-03-13 08:00 A | 2010-03-15 14:15 A |  | 100% |  |  | start no earlier than 2010-03-12 08:00 | Rob | 0.25h | 0.25h |  |
| 74 | 3.5 | Release #7: Mobile Views | milestone | 0d | 2010-03-11 16:30 A | 2010-03-11 16:30 A | 52 | 100% |  |  | start no earlier than 2010-03-11 08:00 | Rob; Robert |  |  |  |
| 76 | 4 | **Iteration 8: Image Capturing: (Total: 125 units)** |  | 5.12d | 2010-03-13 08:00 A | 2010-03-31 15:30 A | 48 | 100% |  |  |  |  | 32.5h | 32.5h | 16 |
| 77 | 4.1 | **Implementation: (Total: 80 units)** |  | 5.06d | 2010-03-15 14:15 A | 2010-03-31 15:30 A |  | 100% |  |  |  |  | 20.5h | 20.5h | 16 |
| 78 | 4.1.1 | **Web system** |  | 5.06d | 2010-03-15 14:15 A | 2010-03-31 15:30 A |  | 100% |  |  |  |  | 10.75h | 10.75h | 16 |
| 79 | 4.1.1.1 | Create batch file to allow images to be POST'ed to the web server |  | 3h | 2010-03-15 14:15 A | 2010-03-17 15:15 A |  | 100% |  |  |  | Rob | 3h | 3h | 12 |
| 80 | 4.1.1.2 | Make changes to triggers and batch files to handle extra camera-related inputs to telescope-controlling application |  | 1h | 2010-03-17 15:15 A | 2010-03-17 16:15 A | 79 | 100% |  |  |  | Rob | 1h | 1h |  |
| 81 | 4.1.1.3 | Update mobile application CSS |  | 2h | 2010-03-29 14:00 A | 2010-03-29 16:00 A |  | 100% |  |  | start no earlier than 2010-03-29 08:00 | Rob | 2h | 2h |  |
| 82 | 4.1.1.4 | Update schedules controller index mobile view |  | 1h | 2010-03-29 16:00 A | 2010-03-31 15:00 A | 81 | 100% |  |  | start no earlier than 2010-03-29 08:00 | Rob | 1h | 1h |  |
| 83 | 4.1.1.5 | Update schedules controller show mobile view |  | 0.5h | 2010-03-31 15:00 A | 2010-03-31 15:30 A | 82 | 100% |  |  | start no earlier than 2010-03-29 08:00 | Rob | 0.5h | 0.5h |  |
| 84 | 4.1.1.6 | Update user sessions controller new mobile view |  | 0.5h | 2010-03-29 16:00 A | 2010-03-29 16:30 A | 81 | 100% |  |  | start no earlier than 2010-03-29 08:00 | Rob | 0.5h | 0.5h |  |
| 85 | 4.1.1.7 | Update images controller index mobile view |  | 0.5h | 2010-03-29 16:00 A | 2010-03-29 16:30 A | 81 | 100% |  |  | start no earlier than 2010-03-29 08:00 | Rob | 0.5h | 0.5h |  |
| 86 | 4.1.1.8 | Update info controller index mobile view |  | 0.25h | 2010-03-29 16:00 A | 2010-03-29 16:15 A | 81 | 100% |  |  | start no earlier than 2010-03-29 08:00 | Rob | 0.25h | 0.25h |  |
| 87 | 4.1.1.9 | Update telescope controller confirm park mobile view |  | 0.25h | 2010-03-29 16:00 A | 2010-03-29 16:15 A | 81 | 100% |  |  | start no earlier than 2010-03-29 08:00 | Rob | 0.25h | 0.25h |  |
| 88 | 4.1.1.10 | Create helper methods to handle mobile functionality for changing days, weeks, months |  | 1h | 2010-03-29 14:45 A | 2010-03-29 15:45 A | 89 | 100% |  |  | start no earlier than 2010-03-29 08:00 | Rob | 1h | 1h |  |
| 89 | 4.1.1.11 | Use session variables to add persistency for current date |  | 0.75h | 2010-03-29 14:00 A | 2010-03-29 14:45 A |  | 100% |  |  | start no earlier than 2010-03-29 08:00 | Rob | 0.75h | 0.75h |  |

| ID | WBS | Task | Type | Duration | Start | Finish | Predecessors | Complete | Constraint | Resources | Work | Actual work | Text1 |
| --- | --- | --- | --- | --- | --- | --- | --- | --- | --- | --- | --- | --- | --- |
| 90 | 4.1.2 | **Telescope-Controlling Application** |  | 2.38d | 2010-03-15 14:15 A | 2010-03-22 15:15 A |  | 100% |  |  | 9.75h | 9.75h | 16 |
| 91 | 4.1.2.1 | Create test program to communicate with the camera and take a picture |  | 4h | 2010-03-15 14:15 A | 2010-03-17 16:15 A |  | 100% |  | Robert | 4h | 4h | 16 |
| 92 | 4.1.2.2 | Test getting and setting parameters of the camera |  | 1h | 2010-03-17 16:15 A | 2010-03-18 15:15 A | 91 | 100% |  | Robert | 1h | 1h |  |
| 93 | 4.1.2.3 | Allow input for selected parameters |  | 1h | 2010-03-17 16:15 A | 2010-03-18 15:15 A | 91 | 100% |  | Robert | 1h | 1h |  |
| 94 | 4.1.2.4 | Set parameters based on inputs |  | 1.5h | 2010-03-18 15:15 A | 2010-03-18 16:45 A | 91, 93 | 100% |  | Robert | 1.5h | 1.5h |  |
| 95 | 4.1.2.5 | Add error checking |  | 1h | 2010-03-18 16:45 A | 2010-03-18 17:45 A | 91, 93, 94 | 100% |  | Robert | 1h | 1h |  |
| 96 | 4.1.2.6 | Migrate source code to telescope control app |  | 0.25h | 2010-03-22 14:00 A | 2010-03-22 14:15 A |  | 100% | start no earlier than 2010-03-19 08:00 | Robert | 0.25h | 0.25h |  |
| 97 | 4.1.2.7 | Clean up camera code and convert it to a method |  | 0.5h | 2010-03-22 14:15 A | 2010-03-22 14:45 A | 96 | 100% |  | Robert | 0.5h | 0.5h |  |
| 98 | 4.1.2.8 | Modify main method to pass camera settings to camera method |  | 0.5h | 2010-03-22 14:45 A | 2010-03-22 15:15 A | 97 | 100% |  | Robert | 0.5h | 0.5h |  |
| 99 | 4.2 | **Testing: (Total: 19 units)** |  | 0.75d | 2010-03-26 08:00 A | 2010-03-31 15:00 A |  | 100% |  |  | 4.75h | 4.75h | 16 |
| 100 | 4.2.1 | **Web system** |  | 0.75d | 2010-03-26 08:00 A | 2010-03-31 15:00 A |  | 100% |  |  | 3h | 3h | 16 |
| 101 | 4.2.1.1 | Fix issue with testing environment |  | 3h | 2010-03-26 08:00 A | 2010-03-31 15:00 A |  | 100% |  | Rob | 3h | 3h | 12 |
| 102 | 4.2.2 | **Telescope-Controlling Application** |  | 0.31d | 2010-03-29 14:00 A | 2010-03-29 15:15 A |  | 100% |  |  | 1.75h | 1.75h | 16 |
| 103 | 4.2.2.1 | Create camera test method |  | 0.25h | 2010-03-29 14:00 A | 2010-03-29 14:15 A |  | 100% | start no earlier than 2010-03-29 08:00 | Robert | 0.25h | 0.25h |  |
| 104 | 4.2.2.2 | Accept inputs from telescope control app |  | 0.25h | 2010-03-29 14:15 A | 2010-03-29 14:30 A | 103 | 100% |  | Robert | 0.25h | 0.25h |  |
| 105 | 4.2.2.3 | Output a test image |  | 0.25h | 2010-03-29 14:15 A | 2010-03-29 14:30 A | 103 | 100% |  | Robert | 0.25h | 0.25h |  |
| 106 | 4.2.2.4 | Simulate camera commands |  | 1h | 2010-03-29 14:15 A | 2010-03-29 15:15 A | 103 | 100% |  | Robert | 1h | 1h |  |
| 107 | 4.3 | **Analysis and Design: (Total: 25 units)** |  | 4.81d | 2010-03-15 14:15 A | 2010-03-31 08:00 A |  | 100% |  |  | 7h | 7h | 16 |
| 108 | 4.3.1 | Create detailed plan |  | 2h | 2010-03-15 14:15 A | 2010-03-15 16:15 A |  | 100% |  | Rob | 2h | 2h |  |
| 109 | 4.3.2 | Create PowerPoint for final presentation |  | 2h | 2010-03-25 14:30 A | 2010-03-25 16:30 A |  | 100% | start no earlier than 2010-03-25 08:00 | Rob | 2h | 2h |  |
| 110 | 4.3.3 | Read camera documentation |  | 0.75h | 2010-03-15 14:15 A | 2010-03-15 15:00 A |  | 100% |  | Robert; Rob | 1.5h | 1.5h |  |
| 111 | 4.3.4 | Update wiki |  | 1.5h | 2010-03-15 14:15 A | 2010-03-15 15:45 A |  | 100% |  | Rob | 1.5h | 1.5h |  |
| 112 | 4.3.5 | All documentation finished | milestone | 0d | 2010-03-31 08:00 A | 2010-03-31 08:00 A | 108, 109, 110, 111 | 100% | start no earlier than 2010-03-13 08:00 | Rob; Robert |  |  |  |
| 113 | 4.4 | **Deployment: (Total: 1 unit)** |  | 0.06d | 2010-03-13 08:00 A | 2010-03-15 14:15 A |  | 100% |  |  | 0.25h | 0.25h | 16 |
| 114 | 4.4.1 | Deploy latest versions of web application to production |  | 15min | 2010-03-13 08:00 A | 2010-03-15 14:15 A |  | 100% | start no earlier than 2010-03-12 08:00 | Rob | 0.25h | 0.25h |  |
| 115 | 4.5 | Release #8: Image Capturing | milestone | 0d | 2010-03-31 15:30 A | 2010-03-31 15:30 A | 77 | 100% |  | Rob; Robert |  |  |  |

| ID | WBS | Task | Type | Duration | Start | Finish | Predecessors | Total slack | Free slack | Constraint | Resources | Work | Text1 |
| --- | --- | --- | --- | --- | --- | --- | --- | --- | --- | --- | --- | --- | --- |
| 117 | 5 | **Iteration 9: Refactored Final Release: (Total: 70 units)** |  | 11.62d | 2010-03-31 15:30 | 2010-04-26 08:00 | 76 | 0d |  |  |  | 22.5h | 16 |
| 118 | 5.1 | **Implementation: (Total: 12 units)** |  | 0.62d | 2010-03-31 15:30 | 2010-04-01 16:00 |  | 8.75d | 0d |  |  | 3h | 16 |
| 119 | 5.1.1 | **Web system** |  | 0.38d | 2010-04-01 14:30 | 2010-04-01 16:00 |  | 8.75d |  |  |  | 1.5h | 16 |
| 120 | 5.1.1.1 | Refactor online help controllers; nest them |  | 1.5h | 2010-04-01 14:30 | 2010-04-01 16:00 |  | 8.5d |  | start no earlier than 2010-04-01 08:00 | Rob | 1.5h |  |
| 121 | 5.1.2 | **Telescope-Controlling Application** |  | 0.38d | 2010-03-31 15:30 | 2010-04-01 15:00 |  | 9d |  |  |  | 1.5h |  |
| 122 | 5.1.2.1 | Final refactoring |  | 1.5h | 2010-03-31 15:30 | 2010-04-01 15:00 |  | 9d |  |  | Robert | 1.5h |  |
| 123 | 5.2 | **Testing: (Total: 36 units)** |  | 2.25d | 2010-04-01 16:00 | 2010-04-06 12:00 | 118 | 8.75d |  |  |  | 12h | 16 |
| 124 | 5.2.1 | Fix functional tests |  | 3h | 2010-04-01 16:00 | 2010-04-05 14:30 | 115 | 8.75d | 0d | start no earlier than 2010-01-07 08:00 | Rob | 3h | 12 |
| 125 | 5.2.2 | System testing |  | 2h | 2010-04-05 14:30 | 2010-04-05 16:30 | 124 | 8.75d | 0d |  | Rob; Robert | 4h |  |
| 126 | 5.2.3 | Integration testing |  | 3h | 2010-04-06 08:00 | 2010-04-06 11:00 | 125 | 8.75d | 0d |  | Robert | 3h | 12 |
| 127 | 5.2.4 | Final user acceptance test |  | 1h | 2010-04-06 11:00 | 2010-04-06 12:00 | 126 | 8.75d |  |  | Rob; Robert | 2h |  |
| 128 | 5.3 | **Analysis and Design: (Total: 12 units)** |  | 0.75d | 2010-03-31 15:30 | 2010-04-01 16:30 |  | 10.88d |  |  |  | 5h | 222 |
| 129 | 5.3.1 | **Finalize documentation** |  | 0.5d | 2010-03-31 15:30 | 2010-04-01 15:30 | 115 | 10.88d |  |  | Rob; Robert | 4h | 24 |
| 130 | 5.3.1.1 | Synchronize Word documents with Wiki |  | 2h | 2010-03-31 15:30 | 2010-04-01 15:30 |  | 10.88d | 0d |  |  |  |  |
| 131 | 5.3.2 | Compile final metrics and project statistics |  | 1h | 2010-04-01 15:30 | 2010-04-01 16:30 | 130 | 10.88d |  |  | Robert | 1h |  |
| 132 | 5.4 | **Deployment: (Total: 10 units)** |  | 0.62d | 2010-04-07 14:30 | 2010-04-08 15:00 |  | 7.12d |  |  |  | 2.5h | 16 |
| 133 | 5.4.1 | Create deployment diagram |  | 2h | 2010-04-07 14:30 | 2010-04-07 16:30 |  | 7.12d |  | start no earlier than 2010-04-07 08:00 | Robert | 2h |  |
| 134 | 5.4.2 | Deploy final versions of system to production environment |  | 30min | 2010-04-08 14:30 | 2010-04-08 15:00 | 133 | 7.12d |  |  | Rob | 0.5h |  |
| 135 | 5.5 | **Final Presentation** |  | 7.25d | 2010-04-08 08:00 | 2010-04-26 08:00 |  | 0d |  |  |  |  | 16 |
| 136 | 5.5.1 | Internal presentation | milestone | 0d | 2010-04-08 08:00 | 2010-04-08 08:00 |  | 7.25d |  | start no earlier than 2010-04-08 08:00 | Rob; Robert |  |  |
| 137 | 5.5.2 | Present project to OC faculty and audience | milestone | 0d | 2010-04-26 08:00 | 2010-04-26 08:00 | 136 | 0d |  | start no earlier than 2010-04-26 08:00 | Rob; Robert |  |  |
| 138 | 5.6 | Original coding ceases | milestone | 0d | 2010-04-08 08:00 | 2010-04-08 08:00 |  | 7.25d |  | start no earlier than 2010-04-08 08:00 | Rob; Robert |  |  |
| 139 | 5.7 | Corrective coding ceases | milestone | 0d | 2010-04-20 08:00 | 2010-04-20 08:00 | 138 | 3.5d |  | start no earlier than 2010-04-20 08:00 | Rob; Robert |  |  |
| 140 | 5.8 | Final release | milestone | 0d | 2010-04-26 08:00 | 2010-04-26 08:00 | 137 | 0d |  | start no earlier than 2010-04-26 08:00 | Rob; Robert |  |  |
