# SpikeProject

Schedule from MS Project, 2009-10-14 to 2009-12-04, 5 hours a day, A marks actual dates.
Okanagan College

## Calendars

- 24 Hours: Mon-Tue off; Wed 13:00-16:30; Thu off; Fri 14:30-17:30; Sat-Sun 08:00-12:00, 13:00-17:00. Exceptions (off unless hours are given): 2009-09-04 to 2009-10-14 00:00-24:00, 2009-10-17 to 2009-10-18, 2009-10-24 to 2009-10-25, 2009-10-31 08:00-12:00, 13:00-17:00, 2009-11-01, 2009-11-07, 2009-11-08 to 2009-11-09 08:00-12:00, 13:00-17:00.

## Resources

| Resource |
| --- |
| Rob |
| Robert |
| Jason |

## Schedule

| ID | WBS | Task | Type | Duration | Start | Finish | Predecessors | Complete | Remaining | Total slack | Constraint | Resources | Work | Actual work | Text1 |
| --- | --- | --- | --- | --- | --- | --- | --- | --- | --- | --- | --- | --- | --- | --- | --- |
| 1 | 1 | **Inception Phase** |  | 4.4d | 2009-10-14 08:00 A | 2009-10-21 16:00 |  | 71% | 1.27d | 22.3d |  | Rob; Robert; Jason | 122.75h | 44.59h |  |
| 2 | 1.1 | **Documentation** |  | 0.2d | 2009-10-14 08:00 A | 2009-10-14 09:00 A |  | 100% |  |  |  |  | 2.75h | 2.75h | 20 |
| 3 | 1.1.1 | Create vision |  | 0.5h | 2009-10-14 08:00 A | 2009-10-14 08:30 A |  | 100% |  |  |  | Rob | 0.5h | 0.5h |  |
| 4 | 1.1.2 | Create project plan document |  | 0.5h | 2009-10-14 08:00 A | 2009-10-14 08:30 A |  | 100% |  |  | finish no earlier than 2009-09-09 17:00 | Robert | 0.5h | 0.5h |  |
| 5 | 1.1.3 | Add business case and product info to vision |  | 1h | 2009-10-14 08:00 A | 2009-10-14 09:00 A | 3 | 100% |  |  |  | Jason | 1h | 1h |  |
| 6 | 1.1.4 | Add initial architecture to developer's guide |  | 0.25h | 2009-10-14 08:00 A | 2009-10-14 08:15 A | 3 | 100% |  |  |  | Rob | 0.25h | 0.25h |  |
| 7 | 1.1.5 | Add risks to project plan |  | 0.5h | 2009-10-14 08:00 A | 2009-10-14 08:30 A | 4 | 100% |  |  |  | Robert | 0.5h | 0.5h |  |
| 8 | 1.2 | Research image recognition technologies |  | 6h | 2009-10-16 14:30 | 2009-10-21 16:00 |  |  |  | 22.3d | start no earlier than 2009-10-16 08:00 | Rob; Robert; Jason | 18h |  | 24 |
| 9 | 1.3 | Research hardware I/O specifications |  | 6h | 2009-10-16 14:30 A | 2009-10-21 16:00 A |  | 100% |  |  | start no earlier than 2009-10-16 08:00 | Rob; Robert; Jason | 18h | 18h | 24 |
| 10 | 1.4 | Research development environment components |  | 6h | 2009-10-16 14:30 A | 2009-10-21 16:00 A |  | 100% |  |  | start no earlier than 2009-10-16 08:00 | Rob; Robert; Jason | 18h | 18h | 24 |
| 11 | 1.5 | Team meeting #1 | milestone | 0h | 2009-10-14 08:00 A | 2009-10-14 08:00 A |  | 100% |  |  | start no earlier than 2009-09-09 08:00 | Rob; Robert; Jason |  |  |  |
| 13 | 2 | **Elaboration Phase** |  | 7.8d | 2009-10-16 08:00 A | 2009-11-09 08:30 |  | 97% | 0.2d | 15.7d |  | Rob; Robert; Jason | 199.75h | 81.23h |  |
| 14 | 2.1 | **Documentation** |  | 0.8d | 2009-10-21 08:00 A | 2009-10-23 15:00 A |  | 100% |  |  |  |  | 5h | 5h | 20 |
| 15 | 2.1.1 | Create tutorial plan |  | 0.5h | 2009-10-23 08:00 A | 2009-10-23 15:00 A |  | 100% |  |  | start no earlier than 2009-10-21 08:00 | Rob | 0.5h | 0.5h |  |
| 16 | 2.1.2 | Create initial developer's guide |  | 2h | 2009-10-21 13:00 A | 2009-10-21 15:00 A |  | 100% |  |  | start no earlier than 2009-10-21 08:00 | Rob | 2h | 2h |  |
| 17 | 2.1.3 | Create use case diagram |  | 0.5h | 2009-10-21 08:00 A | 2009-10-21 13:30 A |  | 100% |  |  |  | Rob; Robert | 1h | 1h |  |
| 18 | 2.1.4 | Write fully dressed use cases |  | 1.5h | 2009-10-21 13:00 A | 2009-10-21 14:30 A | 16 | 100% |  |  | start no earlier than 2009-10-21 08:00 | Robert | 1.5h | 1.5h |  |
| 19 | 2.2 | Research framework and language |  | 16h | 2009-10-16 08:00 A | 2009-10-30 17:30 A | 10 | 100% |  |  | start no earlier than 2009-10-28 08:00 | Jason; Rob; Robert | 24h | 24h | 64 |
| 20 | 2.3 | Team meeting #2 | milestone | 0h | 2009-10-21 08:00 A | 2009-10-21 08:00 A |  | 100% |  |  | start no earlier than 2009-10-21 08:00 | Rob; Robert; Jason |  |  |  |
| 21 | 2.4 | **Documentation** |  | 2.15d | 2009-10-23 08:00 A | 2009-10-31 09:15 |  | 79% | 0.45d | 20.05d |  |  | 4.75h | 3.75h | 20 |
| 22 | 2.4.1 | Update vision |  | 0.5h | 2009-10-23 08:00 A | 2009-10-23 15:00 A | 3 | 100% |  |  |  | Rob | 0.5h | 0.5h |  |
| 23 | 2.4.2 | Update project plan document |  | 0.5h | 2009-10-23 08:00 A | 2009-10-23 15:00 A | 4 | 100% |  |  | finish no earlier than 2009-09-09 17:00 | Robert | 0.5h | 0.5h |  |
| 24 | 2.4.3 | Update developer's guide |  | 0.5h | 2009-10-23 08:00 A | 2009-10-23 15:00 A | 16 | 100% |  |  |  | Robert | 0.5h | 0.5h |  |
| 25 | 2.4.4 | Draft acceptance test |  | 1h | 2009-10-28 13:00 | 2009-10-28 14:00 |  |  |  | 21.4d | start no earlier than 2009-10-28 08:00 | Jason | 1h |  |  |
| 26 | 2.4.5 | Update installation guide information |  | 1h | 2009-10-28 13:00 A | 2009-10-28 14:00 A | 16 | 100% |  |  | start no earlier than 2009-10-28 08:00 | Robert | 1h | 1h |  |
| 27 | 2.4.6 | Get extra user stories from customer |  | 1h | 2009-10-31 08:00 A | 2009-10-31 09:00 A |  | 100% |  |  | start no earlier than 2009-10-31 08:00 | Rob | 1h | 1h |  |
| 28 | 2.4.7 | Prioritize the user stories |  | 0.25h | 2009-10-31 09:00 A | 2009-10-31 09:15 A | 27 | 100% |  |  | start no earlier than 2009-10-31 08:00 | Rob | 0.25h | 0.25h |  |
| 29 | 2.5 | Setting up development environment |  | 2h | 2009-10-28 13:00 A | 2009-10-28 15:00 A | 10 | 100% |  |  | start no earlier than 2009-10-28 08:00 | Rob | 2h | 2h |  |
| 30 | 2.6 | Create domain model |  | 1h | 2009-10-28 08:00 A | 2009-10-28 14:00 A |  | 100% |  |  |  | Jason | 1h | 1h |  |
| 31 | 2.7 | Team meeting #3 | milestone | 0h | 2009-10-28 08:00 A | 2009-10-28 08:00 A |  | 100% |  |  | start no earlier than 2009-10-28 08:00 | Rob; Robert; Jason |  |  |  |

| ID | WBS | Task | Type | Duration | Start | Finish | Predecessors | Complete | Remaining | Total slack | Constraint | Resources | Work | Actual work | Text1 |
| --- | --- | --- | --- | --- | --- | --- | --- | --- | --- | --- | --- | --- | --- | --- | --- |
| 32 | 2.8 | **Research/initial creation of telescope controller program** |  | 2.8d | 2009-10-30 14:30 A | 2009-11-04 16:00 A |  | 100% |  |  |  |  | 5h | 5h | 14 |
| 33 | 2.8.1 | Test telescope interface/drivers |  | 3h | 2009-11-04 13:00 A | 2009-11-04 16:00 A |  | 100% |  |  | start no earlier than 2009-11-04 08:00 | Robert | 3h | 3h | 12 |
| 34 | 2.8.2 | Test telescope programs (Autostar, ASCOM) |  | 2h | 2009-10-30 14:30 A | 2009-10-30 16:30 A |  | 100% |  |  | start no earlier than 2009-10-30 08:00 | Jason | 2h | 2h |  |
| 35 | 2.9 | Team meeting #4 | milestone | 0h | 2009-11-04 08:00 A | 2009-11-04 08:00 A |  | 100% |  |  | start no earlier than 2009-11-04 08:00 | Rob; Robert; Jason |  |  |  |
| 36 | 2.10 | **Ruby on Rails SPIKE Project** |  | 3d | 2009-11-04 08:00 A | 2009-11-09 08:30 |  | 99% | 0d | 0d |  | Rob; Robert; Jason | 50h | 17.15h | 24 |
| 37 | 2.10.1 | Unit testing tutorials |  | 1h | 2009-11-06 14:30 A | 2009-11-06 15:30 A |  | 100% |  |  | start no earlier than 2009-11-06 08:00 | Robert | 1h | 1h |  |
| 38 | 2.10.2 | Commit project to GitHub |  | 0.5h | 2009-11-06 08:00 A | 2009-11-06 15:00 A | 39, 40 | 100% |  |  |  | Rob | 0.5h | 0.5h |  |
| 39 | 2.10.3 | Post scaffolding tutorial |  | 1.5h | 2009-11-04 08:00 A | 2009-11-04 14:30 A |  | 100% |  |  |  | Robert | 1.5h | 1.5h |  |
| 40 | 2.10.4 | Comment and tag functionality tutorial |  | 1.5h | 2009-11-04 08:00 A | 2009-11-04 14:30 A | 39 | 100% |  |  |  | Jason | 1.5h | 1.5h |  |
| 41 | 2.10.5 | Collect SPIKE code for submission |  | 0.5h | 2009-11-09 08:00 A | 2009-11-09 08:30 A |  | 100% |  |  | start no earlier than 2009-11-09 08:00 | Robert | 0.5h | 0.5h |  |
| 42 | 2.11 | SPIKE Project complete | milestone | 0d | 2009-11-06 08:00 A | 2009-11-06 08:00 A |  | 100% |  |  | start no earlier than 2009-11-06 08:00 | Rob; Robert; Jason |  |  |  |
| 44 | 3 | **Construction Phase** |  | 24.2d | 2009-10-14 08:00 A | 2009-11-28 16:00 |  | 76% | 5.92d | 2.5d |  | Rob; Robert; Jason | 431.28h | 265.25h |  |
| 45 | 3.1 | **Documentation: Iteration 2: SPIKE** |  | 0.6d | 2009-11-08 08:00 A | 2009-11-08 11:00 A |  | 100% |  |  |  |  | 6.5h | 6.5h | 20 |
| 46 | 3.1.1 | Add using Git information to developer's guide |  | 1h | 2009-11-08 08:00 A | 2009-11-08 09:00 A |  | 100% |  |  | start no earlier than 2009-11-08 08:00 | Rob | 1h | 1h |  |
| 47 | 3.1.2 | Update project plan for release #1 and #2 |  | 1.5h | 2009-11-08 08:00 A | 2009-11-08 09:30 A |  | 100% |  |  | start no earlier than 2009-11-08 08:00 | Rob | 1.5h | 1.5h |  |
| 48 | 3.1.3 | Add architecture diagram and legend to developer's guide |  | 1h | 2009-11-08 08:00 A | 2009-11-08 09:00 A |  | 100% |  |  | start no earlier than 2009-11-08 08:00 | Rob | 1h | 1h |  |
| 49 | 3.1.4 | Update testing plan |  | 3h | 2009-11-08 08:00 A | 2009-11-08 11:00 A |  | 100% |  |  | start no earlier than 2009-11-08 08:00 | Jason | 3h | 3h | 12 |
| 50 | 3.2 | **Create web system** |  | 14.85d | 2009-10-14 08:00 A | 2009-11-14 14:15 A |  | 100% |  |  |  |  | 12.25h | 12.25h | 14 |
| 51 | 3.2.1 | Create authentication/login subsystem |  | 3h | 2009-11-13 14:30 A | 2009-11-13 17:30 A |  | 100% |  |  | start no earlier than 2009-11-13 08:00 | Rob | 3h | 3h | 12 |
| 52 | 3.2.2 | Add validation to forms, unit tests, etc |  | 4h | 2009-11-14 08:00 A | 2009-11-14 12:00 A | 51 | 100% |  |  | start no earlier than 2009-11-13 08:00 | Jason | 4h | 4h | 16 |
| 53 | 3.2.3 | Create scheduling review logs |  | 0.25h | 2009-11-14 13:00 A | 2009-11-14 13:15 A | 52 | 100% |  |  | start no earlier than 2009-11-13 08:00 | Robert | 0.25h | 0.25h |  |
| 54 | 3.2.4 | Create online help documentation |  | 1h | 2009-11-14 13:15 A | 2009-11-14 14:15 A | 51, 52, 53 | 100% |  |  | start no earlier than 2009-11-14 08:00 | Rob | 1h | 1h |  |
| 55 | 3.2.5 | Create authorization scheme (admin/user) |  | 4h | 2009-10-14 08:00 A | 2009-10-14 12:00 A | 51 | 100% |  |  |  | Rob | 4h | 4h | 16 |
| 56 | 3.3 | **Documentation: Iteration 3: Release #1** |  | 13.8d | 2009-10-14 08:00 A | 2009-11-13 17:30 A |  | 100% |  |  |  |  | 5h | 5h | 20 |
| 57 | 3.3.1 | Create class diagram |  | 1h | 2009-10-14 08:00 A | 2009-10-14 09:00 A |  | 100% |  |  |  | Rob | 1h | 1h |  |
| 58 | 3.3.2 | Update user's guide |  | 3h | 2009-11-13 14:30 A | 2009-11-13 17:30 A |  | 100% |  |  | start no earlier than 2009-11-13 08:00 | Jason | 3h | 3h | 12 |
| 59 | 3.3.3 | Create Release Notes |  | 1h | 2009-10-14 08:00 A | 2009-10-14 09:00 A |  | 100% |  |  |  | Robert | 1h | 1h |  |
| 60 | 3.4 | Team meeting #5 | milestone | 0h | 2009-11-11 08:00 A | 2009-11-11 08:00 A |  | 100% |  |  | start no earlier than 2009-11-11 08:00 | Rob; Robert; Jason |  |  |  |
| 61 | 3.5 | Release #1 | milestone | 0h | 2009-11-18 08:00 A | 2009-11-18 08:00 A | 42 | 100% |  |  | start no earlier than 2009-11-18 08:00 |  |  |  |  |
| 62 | 3.6 | Test connection with telescope drivers using C# tutorial |  | 2h | 2009-11-25 13:00 A | 2009-11-25 15:00 A |  | 100% |  |  | start no earlier than 2009-11-25 08:00 | Robert | 2h | 2h |  |
| 63 | 3.7 | Update documentation |  | 10h | 2009-11-27 08:00 A | 2009-11-28 16:00 |  | 3% | 9.75h | 2.5d |  | Jason; Robert; Rob | 22.03h | 0.47h | 40 |

| ID | WBS | Task | Type | Duration | Start | Finish | Predecessors | Complete | Remaining | Total slack | Constraint | Resources | Work | Actual work | Text1 |
| --- | --- | --- | --- | --- | --- | --- | --- | --- | --- | --- | --- | --- | --- | --- | --- |
| 64 | 3.8 | **Add components to web system** |  | 6.6d | 2009-11-18 13:00 A | 2009-11-28 12:00 |  | 80% | 1.29d | 3.1d |  |  | 20.5h | 16.5h | 14 |
| 65 | 3.8.1 | Set up production server |  | 2.5h | 2009-11-20 08:00 A | 2009-11-20 17:00 A |  | 100% |  |  |  | Rob | 2.5h | 2.5h | 10 |
| 66 | 3.8.2 | Add HTTPS/HTTP for admin/user |  | 2h | 2009-11-25 13:00 A | 2009-11-25 15:00 A | 65 | 100% |  |  | start no earlier than 2009-11-25 08:00 | Rob | 2h | 2h |  |
| 67 | 3.8.3 | Add separate stylesheets for PC users and mobile device users |  | 4h | 2009-11-28 08:00 | 2009-11-28 12:00 |  |  |  | 3.1d | start no earlier than 2009-11-28 08:00 | Rob | 4h |  | 16 |
| 68 | 3.8.4 | Change schedule input forms |  | 4h | 2009-11-27 08:00 A | 2009-11-28 09:00 A |  | 100% |  |  |  | Rob | 4h | 4h | 16 |
| 69 | 3.8.5 | Fix unit tests |  | 2h | 2009-11-25 08:00 A | 2009-11-25 15:00 A |  | 100% |  |  |  | Rob | 2h | 2h |  |
| 70 | 3.8.6 | Add gallery section - display latest images from telescope |  | 6h | 2009-11-18 13:00 A | 2009-11-20 17:00 A |  | 100% |  |  | start no earlier than 2009-11-18 08:00 | Rob | 6h | 6h | 24 |
| 71 | 3.9 | Team meeting #6 | milestone | 0h | 2009-11-18 08:00 A | 2009-11-18 08:00 A |  | 100% |  |  | start no earlier than 2009-11-18 08:00 | Rob; Robert; Jason |  |  |  |
| 73 | 4 | **Transition Phase** |  | 5.2d | 2009-11-25 08:00 A | 2009-12-04 08:00 |  | 19% | 4.21d | 0d |  | Rob; Robert; Jason | 105.5h | 16.86h |  |
| 74 | 4.1 | Create Initial PowerPoint Presentation |  | 2h | 2009-11-27 14:30 A | 2009-11-27 16:30 A |  | 100% |  |  | start no earlier than 2009-11-27 08:00 | Rob | 2h | 2h |  |
| 75 | 4.2 | Team meeting #7 | milestone | 0h | 2009-11-25 08:00 A | 2009-11-25 08:00 A |  | 100% |  |  | start no earlier than 2009-11-25 08:00 | Rob; Robert; Jason |  |  |  |
| 76 | 4.3 | Release #2 | milestone | 0h | 2009-11-25 08:00 A | 2009-11-25 08:00 A | 61 | 100% |  |  | start no earlier than 2009-11-25 08:00 |  |  |  |  |
| 77 | 4.4 | End refactoring |  | 6h | 2009-11-25 13:00 | 2009-11-27 17:00 | 76 |  |  | 4d | start no earlier than 2009-11-25 08:00 | Rob; Robert; Jason | 18h |  | 24 |
| 78 | 4.5 | Extensive End User Testing |  | 2h | 2009-11-27 14:30 | 2009-11-27 16:30 |  |  |  | 4.1d | start no earlier than 2009-11-27 08:00 | Rob; Robert; Jason | 6h |  |  |
| 79 | 4.6 | Final Acceptance Test |  | 0.5h | 2009-12-02 13:00 | 2009-12-02 13:30 |  |  |  | 0.6d | start no earlier than 2009-12-02 08:00 | Rob; Robert; Jason | 1.5h |  |  |
| 80 | 4.7 | Final Prototype Release (the refactored 2nd release) | milestone | 0d | 2009-12-04 08:00 | 2009-12-04 08:00 | 77, 76 |  |  | 0d | start no earlier than 2009-12-04 08:00 | Rob; Robert; Jason |  |  |  |
